# wbs

Schedule from MS Project, 2023-12-18 to 2024-03-25, costs in $, A marks actual dates.

## Calendars

- Standard: Mon-Fri 08:00-12:00, 13:00-17:00; Sat-Sun off.

## Resources

| Resource |
| --- |
| Subrat |
| Srijan |
| Sneha |
| Supriya |
| Nitisha |

## Schedule

| ID | WBS | Task | Type | Duration | Start | Finish | Predecessors | Complete | Remaining | Baseline start | Baseline finish | Baseline duration | Total slack | Free slack | Constraint | Resources | Work | Actual work | Cost | Baseline cost | Actual cost |
| --- | --- | --- | --- | --- | --- | --- | --- | --- | --- | --- | --- | --- | --- | --- | --- | --- | --- | --- | --- | --- | --- |
| 1 | 1 | Project Initiation | milestone | 0d | 2023-12-18 A | 2023-12-18 A |  | 100% |  | 2023-12-18 | 2023-12-18 |  |  |  | start no earlier than 2023-12-18 |  |  |  |  |  |  |
| 2 | 2 | **Planning** |  | 7d | 2023-12-18 A | 2023-12-26 A |  | 100% |  | 2023-12-18 | 2023-12-26 | 7d |  |  |  |  | 56h | 56h | 2,640 | 7,960 | 2,640 |
| 3 | 2.1 | Schedule Planning |  | 3d | 2023-12-18 A | 2023-12-20 A |  | 100% |  | 2023-12-18 | 2023-12-20 | 3d |  |  |  | Sneha | 24h | 24h | 1,200 | 1,200 | 1,200 |
| 4 | 2.2 | Budgeting |  | 4d | 2023-12-21 A | 2023-12-26 A | 3 | 100% |  | 2023-12-21 | 2023-12-26 | 4d |  |  |  | Srijan | 32h | 32h | 1,440 | 1,440 | 1,440 |
| 5 | 3 | **Analysis** |  | 8d | 2023-12-27 A | 2024-01-05 A | 2 | 100% |  | 2023-12-27 | 2024-01-05 | 8d |  |  |  |  | 80h | 80h | 3,920 | 10,000 | 3,920 |
| 6 | 3.1 | Technical Feasibility |  | 2d | 2023-12-27 A | 2023-12-28 A | 4 | 100% |  | 2023-12-27 | 2023-12-28 | 2d |  |  |  | Subrat | 16h | 16h | 800 | 800 | 800 |
| 7 | 3.2 | Economic Feasibilty |  | 2d | 2023-12-29 A | 2024-01-01 A | 6 | 100% |  | 2023-12-29 | 2024-01-01 | 2d |  |  |  | Srijan | 16h | 16h | 720 | 720 | 720 |
| 8 | 3.3 | Operational Feasibility |  | 2d | 2024-01-02 A | 2024-01-03 A | 7 | 100% |  | 2024-01-02 | 2024-01-03 | 2d |  |  |  | Sneha | 16h | 16h | 800 | 800 | 800 |
| 9 | 3.4 | Schedule Feasibility |  | 2d | 2024-01-04 A | 2024-01-05 A | 8 | 100% |  | 2024-01-04 | 2024-01-05 | 2d |  |  |  | Sneha; Subrat | 32h | 32h | 1,600 | 1,600 | 1,600 |
| 10 | 4 | **Design** |  | 6d | 2024-01-08 A | 2024-01-15 A | 5 | 100% |  | 2024-01-08 | 2024-01-15 | 6d |  |  |  |  | 48h | 48h | 2,360 | 4,520 | 2,360 |
| 11 | 4.1 | Database Design |  | 2d | 2024-01-08 A | 2024-01-09 A | 5 | 100% |  | 2024-01-08 | 2024-01-09 | 2d |  |  |  | Subrat | 16h | 16h | 800 | 800 | 800 |
| 12 | 4.2 | UI Design |  | 1d | 2024-01-10 A | 2024-01-10 A | 11 | 100% |  | 2024-01-10 | 2024-01-10 | 1d |  |  |  | Srijan | 8h | 8h | 360 | 360 | 360 |
| 13 | 4.3 | Prototyping |  | 3d | 2024-01-11 A | 2024-01-15 A | 12 | 100% |  | 2024-01-11 | 2024-01-15 | 3d |  |  |  | Sneha | 24h | 24h | 1,200 | 1,200 | 1,200 |
| 14 | 5 | **Backend Implementation** |  | 20d | 2024-01-16 A | 2024-02-12 | 10 | 80% | 4d | 2024-01-16 | 2024-02-12 | 20d |  |  |  |  | 160h | 128h | 8,240 | 18,120 | 6,640 |
| 15 | 5.1 | Database Creation |  | 8d | 2024-01-16 A | 2024-01-25 A | 13 | 100% |  | 2024-01-16 | 2024-01-25 | 8d |  |  |  | Nitisha | 64h | 64h | 3,200 | 2,880 | 3,200 |
| 16 | 5.2 | Login/Registration Module |  | 3d | 2024-01-26 A | 2024-01-30 A | 15 | 100% |  | 2024-01-26 | 2024-01-30 | 3d |  |  |  | Supriya | 24h | 24h | 1,440 | 1,440 | 1,440 |
| 17 | 5.3 | Ticket Booking Module |  | 5d | 2024-01-26 A | 2024-02-01 A | 15 | 100% |  | 2024-01-26 | 2024-02-01 | 5d |  |  |  | Nitisha | 40h | 40h | 2,000 | 1,800 | 2,000 |
| 18 | 5.4 | Ticket Payment/Cancellation Module |  | 4d | 2024-02-02 | 2024-02-07 | 16, 17 |  |  | 2024-02-02 | 2024-02-07 | 4d | 21d |  |  | Nitisha | 32h |  | 1,600 | 1,920 |  |
| 19 | 6 | **Front End Implementation** |  | 18d | 2024-02-13 A | 2024-03-07 | 10 | 75% | 4.5d | 2024-02-13 | 2024-03-07 | 18d |  |  |  |  | 176h | 126h | 9,120 | 21,600 | 6,480 |
| 20 | 6.1 | Login/Registration Page |  | 3d | 2024-02-13 A | 2024-02-15 A | 12 | 100% |  | 2024-02-13 | 2024-02-15 | 3d |  |  |  | Sneha | 24h | 24h | 1,200 | 1,200 | 1,200 |
| 21 | 6.2 | Customer Dashboard |  | 6d | 2024-02-13 A | 2024-02-20 A | 12 | 100% |  | 2024-02-13 | 2024-02-20 | 6d |  |  |  | Subrat | 48h | 48h | 2,400 | 2,400 | 2,400 |
| 22 | 6.3 | Ticket Booking Page |  | 4d | 2024-02-21 A | 2024-02-26 | 20, 21 | 56% | 1.75d | 2024-02-21 | 2024-02-26 | 4d | 6d | 0d |  | Nitisha; Supriya | 64h | 36h | 3,520 | 1,600 | 1,980 |
| 23 | 6.4 | Payment Gateway Integration |  | 2d | 2024-02-27 | 2024-02-28 | 22 |  |  | 2024-02-27 | 2024-02-28 | 2d | 6d |  |  | Sneha | 16h |  | 800 | 800 |  |
| 24 | 6.5 | Manage Bookings Page |  | 3d | 2024-02-21 A | 2024-02-23 | 20, 21 | 75% | 0.75d | 2024-02-21 | 2024-02-23 | 3d | 9d |  |  | Subrat | 24h | 18h | 1,200 | 1,200 | 900 |

| ID | WBS | Task | Type | Duration | Start | Finish | Predecessors | Baseline start | Baseline finish | Baseline duration | Total slack | Resources | Work | Cost | Baseline cost |
| --- | --- | --- | --- | --- | --- | --- | --- | --- | --- | --- | --- | --- | --- | --- | --- |
| 25 | 7 | **Testing** |  | 10d | 2024-03-08 | 2024-03-21 | 14, 19 | 2024-03-08 | 2024-03-21 | 10d |  |  | 120h | 5,680 | 13,280 |
| 26 | 7.1 | Unit Testing |  | 3d | 2024-03-08 | 2024-03-12 |  | 2024-03-08 | 2024-03-12 | 3d | 0d | Srijan | 24h | 1,080 | 1,080 |
| 27 | 7.2 | Integration Testing |  | 2d | 2024-03-13 | 2024-03-14 | 26 | 2024-03-13 | 2024-03-14 | 2d | 0d | Subrat | 16h | 800 | 800 |
| 28 | 7.3 | System Testing |  | 5d | 2024-03-15 | 2024-03-21 | 27 | 2024-03-15 | 2024-03-21 | 5d | 0d | Srijan; Subrat | 80h | 3,800 | 3,800 |
| 29 | 8 | Deployment |  | 2d | 2024-03-22 | 2024-03-25 | 25 | 2024-03-22 | 2024-03-25 | 2d | 0d |  |  |  |  |
| 30 | 9 | Project End | milestone | 0d | 2024-03-25 | 2024-03-25 | 29 | 2024-03-25 | 2024-03-25 |  | 0d |  |  |  |  |
